# BLUEsatProjectPlan

Schedule from MS Project, 2012-01-14 to 2013-02-28, scheduled back from the finish, 24 hours a day.

## Calendars

- 24 Hours: Mon-Sun 00:00-24:00.

## Resources

| Resource |
| --- |
| PCB Team |
| Mechanical Team |
| Radio Team |
| Software Team |
| Payload Team |
| Executive |
| Power Team |
| Testing Team |
| External |

## Schedule

| ID | WBS | Task | Type | Duration | Start | Finish | Predecessors | Constraint | Resources | Work |
| --- | --- | --- | --- | --- | --- | --- | --- | --- | --- | --- |
| 1 | 1 | **Documentation** |  | 411.38d | 2012-01-14 | 2013-02-28 |  | as late as possible |  |  |
| 2 | 1.1 | <New Task> | manual | 0.33d | 2013-02-28 | 2013-02-28 |  |  |  |  |
| 3 | 2 | **Design, Testing and Analysis** |  | 30w | 2012-01-14 | 2012-08-11 |  | as late as possible |  | 93438h |
| 4 | 2.1 | Amateur Radio Licensing - Preparation and Testing | manual | 6w | 2012-01-28 | 2012-03-10 |  | as late as possible |  |  |
| 5 | 2.2 | **Integration Rig (Flatsat)** |  | 6w | 2012-01-14 | 2012-02-25 |  | as late as possible | Executive; Payload Team; PCB Team; Power Team; Radio Team; Software Team; Testing Team | 7056h |
| 6 | 2.2.1 | Driver Development | manual | 3w | 2012-01-14 | 2012-02-04 |  |  |  |  |
| 7 | 2.2.2 | BCR Prototype creation and testing | manual | 3w | 2012-01-14 | 2012-02-04 |  | as late as possible |  |  |
| 8 | 2.2.3 | Bus board routing | manual | 3w | 2012-01-14 | 2012-02-04 |  | as late as possible |  |  |
| 9 | 2.2.4 | Rig Construction | manual | 3w | 2012-02-04 | 2012-02-25 | 7, 8 | as late as possible |  |  |
| 10 | 2.2.5 | Communications Testing | manual | 3w | 2012-02-04 | 2012-02-25 | 6, 9SS | as late as possible |  |  |
| 11 | 2.3 | **Feasbility Investigation** |  | 7.05w | 2012-02-25 | 2012-04-14 |  | as late as possible | Executive | 3555h |
| 12 | 2.3.1 | Standalone Camera evaluation | manual | 7.05w | 2012-02-25 | 2012-04-14 |  |  | Executive | 1185h |
| 13 | 2.3.2 | Namuru Evaluation | manual | 7.05w | 2012-02-25 | 2012-04-14 |  | as late as possible | Executive | 1185h |
| 14 | 2.4 | **Design Finalisation** |  | 24.05w | 2012-02-25 | 2012-08-11 | 5SS | as late as possible | Mechanical Team; Payload Team; PCB Team; Power Team; Radio Team; Software Team | 54576h |
| 15 | 2.4.1 | Software Application Level Dvelopment | manual | 168.38d | 2012-02-25 | 2012-08-11 |  | as late as possible | Software Team | 4041h |
| 16 | 2.4.2 | LTP development and testing | manual | 168.38d | 2012-02-25 | 2012-08-11 |  | as late as possible | Software Team | 4041h |
| 17 | 2.4.3 | Beaglebone L4 software development | manual | 168.38d | 2012-02-25 | 2012-08-11 |  | as late as possible | Payload Team; Software Team | 8082h |
| 18 | 2.4.4 | Beagle Bone design integration | manual | 8w | 2012-02-25 | 2012-04-21 |  | as late as possible | PCB Team; Payload Team | 2688h |
| 19 | 2.4.5 | Battery Charge design finalisation | manual | 8w | 2012-03-24 | 2012-05-19 |  | as late as possible | Power Team | 1344h |
| 20 | 2.4.6 | Antennae Foothold, Mounting and Material | manual | 8w | 2012-03-24 | 2012-05-19 |  | as late as possible | Mechanical Team; Radio Team | 2688h |
| 21 | 2.4.7 | Solar Panel Routing and Mounting | manual | 42.38d | 2012-04-06 | 2012-05-19 |  | as late as possible | Power Team; Mechanical Team | 2034h |
| 22 | 2.4.8 | Telemetry sensor mounting and distribution | manual | 28.38d | 2012-04-21 | 2012-05-19 |  | as late as possible | PCB Team | 681h |
| 23 | 2.4.9 | Tray 2 PCB Layout and Routing | manual | 4.05w | 2012-05-18 | 2012-06-16 | 21, 19 | as late as possible | Mechanical Team; PCB Team | 1362h |
| 24 | 2.4.10 | Battery Mount Design | manual | 6w | 2012-05-19 | 2012-06-30 | 21 | as late as possible | Power Team; Mechanical Team | 2016h |
| 25 | 2.4.11 | Wiring Harness | manual | 4.05w | 2012-06-16 | 2012-07-14 | 23, 21 |  | PCB Team | 681h |
| 26 | 2.4.12 | Tray 4 PCB Layout and Routing | manual | 4w | 2012-07-14 | 2012-08-11 | 13, 18 | as late as possible | PCB Team | 672h |

| ID | WBS | Task | Type | Duration | Start | Finish | Predecessors | Total slack | Free slack | Constraint | Resources | Work |
| --- | --- | --- | --- | --- | --- | --- | --- | --- | --- | --- | --- | --- |
| 27 | 2.5 | **Testing, Simulation and Evaluation - Electrical** |  | 24.05w | 2012-02-25 | 2012-08-11 |  |  |  | as late as possible | Testing Team; Radio Team | 14130h |
| 28 | 2.5.1 | Bent Pipe RF testing | manual | 2w | 2012-02-25 | 2012-03-10 |  |  |  | as late as possible | Radio Team | 336h |
| 29 | 2.5.2 | Telecommand Testing | manual | 6w | 2012-03-10 | 2012-04-21 |  |  |  | as late as possible | Radio Team | 1008h |
| 30 | 2.5.3 | Regulator and LDO characterisation | manual | 4w | 2012-02-25 | 2012-03-24 |  |  |  | as late as possible | Testing Team | 672h |
| 31 | 2.5.4 | Communicaitions power characterisation | manual | 4w | 2012-03-24 | 2012-04-21 |  |  |  | as late as possible | Testing Team | 672h |
| 32 | 2.5.5 | Telemetry testing and power characterisation | manual | 4w | 2012-04-21 | 2012-05-19 |  |  |  | as late as possible | Testing Team | 672h |
| 33 | 2.5.6 | CSC power characterisation | manual | 4w | 2012-05-19 | 2012-06-16 |  |  |  | as late as possible | Testing Team | 672h |
| 34 | 2.5.7 | Battery testing and charecterisation | manual | 4w | 2012-06-16 | 2012-07-14 | 19 |  |  |  | Testing Team | 672h |
| 35 | 2.5.8 | Beagle Bone power charecterisation | manual | 4w | 2012-07-07 | 2012-08-04 | 18 |  |  | as late as possible | Testing Team | 672h |
| 36 | 2.5.9 | Solar BCR integration testing | manual | 4w | 2012-07-14 | 2012-08-11 | 19 |  |  | as late as possible | Power Team | 672h |
| 37 | 2.6 | **Simulation - Mechanical** |  | 30.05w | 2012-01-14 | 2012-08-11 |  |  |  | as late as possible | Mechanical Team | 14121h |
| 38 | 2.6.1 | Structural and Thermal model creation | manual | 3w | 2012-01-14 | 2012-02-04 |  |  |  | as late as possible | Mechanical Team | 504h |
| 39 | 2.6.2 | Structural stress research and Investigation | manual | 10w | 2012-02-04 | 2012-04-14 |  |  |  | as late as possible | Mechanical Team | 1680h |
| 40 | 2.6.3 | Thermal Environmental research | manual | 10w | 2012-02-04 | 2012-04-14 |  |  |  | as late as possible | Mechanical Team; Testing Team | 3360h |
| 41 | 2.6.4 | Model Touch up | manual | 9w | 2012-04-14 | 2012-06-16 | 38, 39, 40 |  |  | as late as possible | Mechanical Team | 1512h |
| 42 | 2.6.5 | Component thermal research | manual | 3w | 2012-06-16 | 2012-07-07 | 30, 31, 32, 33 |  |  | as late as possible | Mechanical Team | 504h |
| 43 | 2.6.6 | Final structural simulation | manual | 4w | 2012-07-07 | 2012-08-04 | 41, 39 |  |  | as late as possible | Mechanical Team | 672h |
| 44 | 2.6.7 | Final thermal simulation | manual | 4w | 2012-07-07 | 2012-08-04 | 40, 42, 41 |  |  | as late as possible | Mechanical Team | 672h |
| 45 | 2.6.8 | Critical Design Review |  | 1w | 2012-08-04 | 2012-08-11 |  | 203.38d | 0d | as late as possible | Executive | 168h |
| 46 | 3 | **Production and Final Functional Testing** |  | 12w | 2012-08-18 | 2012-11-10 |  |  |  | as late as possible | Executive; External; Mechanical Team; Payload Team; PCB Team; Power Team; Radio Team; Software Team; Testing Team | 35448h |
| 47 | 3.1 | Sourcing and Ordering of Components | manual | 4w | 2012-08-18 | 2012-09-15 |  |  |  | as late as possible |  |  |
| 48 | 3.2 | PCB Manufacture | manual | 4w | 2012-08-18 | 2012-09-15 | 25, 26 |  |  |  | External | 672h |
| 49 | 3.3 | Critical Systems Software Testing | manual | 4w | 2012-08-18 | 2012-09-15 |  |  |  | as late as possible | Software Team | 672h |
| 50 | 3.4 | Communications Testing (Hardware Level) | manual | 4w | 2012-08-18 | 2012-09-15 |  |  |  | as late as possible | Radio Team | 672h |
| 51 | 3.5 | Communications Testing (Software Level) | manual | 4w | 2012-09-22 | 2012-10-20 | 49, 50 |  |  | as late as possible | Software Team; Radio Team | 1344h |
| 52 | 3.6 | PCB Population | manual | 6w | 2012-09-15 | 2012-10-27 | 48 |  |  | as late as possible | Payload Team; PCB Team; Power Team; Radio Team; External; Testing Team | 6048h |
| 53 | 3.7 | Telemetry testing and calibration | manual | 4w | 2012-10-06 | 2012-11-03 | 52SS |  |  | as late as possible | PCB Team; Software Team | 1344h |
| 54 | 3.8 | Satellite Assembly | manual | 5w | 2012-09-29 | 2012-11-03 | 52SS |  |  | as late as possible | Mechanical Team; Payload Team; PCB Team; Power Team; Radio Team; Software Team; Testing Team | 5880h |
| 55 | 3.9 | Generation of Final Function Test Specifications | manual | 3w | 2012-10-20 | 2012-11-10 | 50, 51 |  |  | as late as possible | External | 504h |
| 56 | 3.10 | Test Readiness Review | manual | 1w | 2012-11-03 | 2012-11-10 |  |  |  | as late as possible | Executive | 168h |

| ID | WBS | Task | Type | Duration | Start | Finish | Constraint | Resources | Work |
| --- | --- | --- | --- | --- | --- | --- | --- | --- | --- |
| 57 | 4 | **Qualification testing** |  | 15.77w | 2012-11-10 | 2013-02-28 | as late as possible |  | 4536h |
| 58 | 4.1 | Initial Functional Test | manual | 1w | 2012-11-11 | 2012-11-18 | as late as possible |  |  |
| 59 | 4.2 | Thermal Cycling Test | manual | 1w | 2012-11-18 | 2012-11-25 | as late as possible |  |  |
| 60 | 4.3 | Thermal Vacuum Testing Pt 1 | manual | 3w | 2012-11-25 | 2012-12-16 | as late as possible |  |  |
| 61 | 4.4 | Christmas | manual | 3w | 2012-12-16 | 2013-01-06 |  | Executive; External; Mechanical Team; Payload Team; PCB Team; Power Team; Radio Team; Software Team; Testing Team | 4536h |
| 62 | 4.5 | Thermal Vacuum Testing Pt 2 | manual | 4.62w | 2013-01-06 | 2013-02-07 | as late as possible |  |  |
| 63 | 4.6 | Mechanical Testing | manual | 1w | 2013-02-07 | 2013-02-14 | as late as possible |  |  |
| 64 | 4.7 | EMC and ESD testing | manual | 1w | 2013-02-14 | 2013-02-21 | as late as possible |  |  |
| 65 | 4.8 | Final Functional Test | manual | 1w | 2013-02-21 | 2013-02-28 | as late as possible |  |  |
| 66 | 5 | **Delivery and Launch** |  | 3.77w | 2013-02-02 | 2013-02-28 | as late as possible |  |  |
| 67 | 5.1 | <New Task> | manual | 1d | 2013-02-27 | 2013-02-28 | as late as possible |  |  |
| 69 | 6 | **Uni Timetable** |  | 411.38d | 2012-01-14 | 2013-02-28 | as late as possible |  |  |
| 70 | 6.1 | Summer Semester Stuvac | manual | 5.38d | 2012-01-28 | 2012-02-02 | as late as possible |  |  |
| 71 | 6.2 | Summer Semester Exams | manual | 8.38d | 2012-02-03 | 2012-02-11 | as late as possible |  |  |
| 72 | 6.3 | Semester 1 First Half | manual | 39.38d | 2012-02-27 | 2012-04-06 | as late as possible |  |  |
| 73 | 6.4 | Semester 1 Second Half | manual | 46.38d | 2012-04-16 | 2012-06-01 | as late as possible |  |  |
| 74 | 6.5 | Semester 1 Stuvac | manual | 5.38d | 2012-06-02 | 2012-06-07 | as late as possible |  |  |
| 75 | 6.6 | Semester 1 Exams | manual | 17.38d | 2012-06-08 | 2012-06-25 | as late as possible |  |  |
| 76 | 6.7 | Semester 2 First Half | manual | 6.77w | 2012-07-16 | 2012-09-01 | as late as possible |  |  |
| 77 | 6.8 | Semester 2 Second Half | manual | 5.77w | 2012-09-09 | 2012-10-19 | as late as possible |  |  |
| 78 | 6.9 | Semester 2 Stuvac | manual | 5.38d | 2012-10-20 | 2012-10-25 | as late as possible |  |  |
| 79 | 6.10 | Semester 2 Exams | manual | 18.38d | 2012-10-26 | 2012-11-13 | as late as possible |  |  |
